# new prec_ans

Schedule from MS Project, 2013-03-04 to 2013-08-21.
iss

## Calendars

- Standard: Mon-Fri 08:00-12:00, 13:00-17:00; Sat-Sun off.

## Resources

| Resource |
| --- |
| Project Leader |
| Programmer |
| User Representative |
| User |
| User Manager |
| IT Department Applications Development Manager |

## Schedule

| ID | WBS | Task | Duration | Start | Finish | Predecessors | Total slack | Free slack | Resources | Work |
| --- | --- | --- | --- | --- | --- | --- | --- | --- | --- | --- |
| 1 | 1 | **Initial Planning** | 6d | 2013-03-04 | 2013-03-11 |  | 0d |  |  | 64h |
| 2 | 1.1 | Produce Project Plan | 4d | 2013-03-04 | 2013-03-07 |  | 0d |  | Project Leader | 32h |
| 3 | 1.2 | Set-up filing system | 1d | 2013-03-08 | 2013-03-08 | 2 | 1d |  | Project Leader | 8h |
| 4 | 1.3 | Review/Finalise plan | 1d | 2013-03-11 | 2013-03-11 | 2 | 0d |  | Project Leader; User Manager; IT Department Applications Development Manager | 24h |
| 5 | 2 | **Requirements Identification** | 17d | 2013-03-12 | 2013-04-03 |  | 0d |  |  | 384h |
| 6 | 2.1 | Examine existing MLRD database documentation | 2d | 2013-03-12 | 2013-03-13 | 4, 3 | 0d |  | Project Leader | 16h |
| 7 | 2.2 | Interview Users | 4d | 2013-03-14 | 2013-03-19 | 6 | 0d |  | Project Leader; User Representative; User | 96h |
| 8 | 2.3 | Undertake Use Case Modeling | 5d | 2013-03-20 | 2013-03-26 | 7 | 0d |  | Project Leader | 40h |
| 9 | 2.4 | Prototype User Interface | 5d | 2013-03-20 | 2013-03-26 | 7 | 0d |  | Programmer; User Representative; User [80%] | 112h |
| 10 | 2.5 | Produce Use Case Model Survey | 5d | 2013-03-27 | 2013-04-02 | 8 | 0d |  | Project Leader | 40h |
| 11 | 2.6 | Produce User Interface Specification | 5d | 2013-03-27 | 2013-04-02 | 9 | 0d |  | Programmer | 40h |
| 12 | 2.7 | Review/finalize Requirements documentation | 1d | 2013-04-03 | 2013-04-03 | 11, 10 | 0d |  | Programmer; Project Leader; IT Department Applications Development Manager; User Manager; User Representative | 40h |
| 13 | 3 | **Requirements Specification** | 15d | 2013-04-04 | 2013-04-24 |  | 0d |  |  | 128h |
| 14 | 3.1 | Identify Domain Objects/Attributes | 4d | 2013-04-04 | 2013-04-09 | 12 | 0d |  | Project Leader | 32h |
| 15 | 3.2 | Produce Class/Collaboration diagrams | 5d | 2013-04-10 | 2013-04-16 | 14 | 0d |  | Project Leader | 40h |
| 16 | 3.3 | Write Use Case Realization Reports | 5d | 2013-04-17 | 2013-04-23 | 15 | 0d |  | Project Leader | 40h |
| 17 | 3.4 | Review/finalize Use Case Realization Reports | 1d | 2013-04-24 | 2013-04-24 | 16 | 0d |  | Project Leader; IT Department Applications Development Manager | 16h |
| 18 | 4 | **Design Modeling** | 26d | 2013-04-25 | 2013-05-30 |  | 0d |  |  | 320h |
| 19 | 4.1 | Adjust objects to implementation architecture | 4d | 2013-04-25 | 2013-04-30 | 17 | 0d |  | Project Leader | 32h |
| 20 | 4.2 | Define object associations (static/ dynamic/creation) | 4d | 2013-05-01 | 2013-05-06 | 19 | 0d |  | Project Leader | 32h |
| 21 | 4.3 | Create DB logical Design | 4d | 2013-05-07 | 2013-05-10 | 20 | 1d | 0d | Programmer | 32h |
| 22 | 4.4 | Produce Sequence Diagrams | 5d | 2013-05-07 | 2013-05-13 | 20 | 0d |  | Project Leader | 40h |
| 23 | 4.5 | Specify object attributes/operations | 4d | 2013-05-14 | 2013-05-17 | 22 | 0d |  | Project Leader | 32h |
| 24 | 4.6 | Structure object model for implementation | 4d | 2013-05-20 | 2013-05-23 | 23 | 0d |  | Project Leader | 32h |
| 25 | 4.7 | Produce Design Model Report | 4d | 2013-05-24 | 2013-05-29 | 24, 27 | 0d |  | Project Leader | 32h |
| 26 | 4.8 | Produce Data Base Physical Design | 4d | 2013-05-13 | 2013-05-16 | 21 | 1d | 0d | Programmer | 32h |
| 27 | 4.9 | Set database parameters | 4d | 2013-05-17 | 2013-05-22 | 26 | 1d |  | Programmer | 32h |
| 28 | 4.10 | Review/finalize Design Document | 1d | 2013-05-30 | 2013-05-30 | 25 | 0d |  | Programmer; Project Leader; IT Department Applications Development Manager | 24h |

| ID | WBS | Task | Duration | Start | Finish | Predecessors | Total slack | Free slack | Resources | Work |
| --- | --- | --- | --- | --- | --- | --- | --- | --- | --- | --- |
| 29 | 5 | **Programming** | 33d | 2013-05-31 | 2013-07-16 |  | 0d |  |  | 240h |
| 30 | 5.1 | Create C# code | 10d | 2013-07-03 | 2013-07-16 | 28 | 0d |  | Programmer; Project Leader | 160h |
| 31 | 5.2 | Define Database tables and fields | 10d | 2013-05-31 | 2013-06-13 | 28 | 19d | 9d | Programmer | 80h |
| 32 | 6 | **Database Migration** | 23d | 2013-05-31 | 2013-07-02 |  | 10d |  |  | 136h |
| 33 | 6.1 | Produce Database migration plan | 2d | 2013-05-31 | 2013-06-03 | 26 | 10d | 0d | Project Leader | 16h |
| 34 | 6.2 | Review/finalize Database migration plan | 1d | 2013-06-14 | 2013-06-14 | 33 | 10d | 0d | Project Leader; IT Department Applications Development Manager; Programmer | 24h |
| 35 | 6.3 | Extract Data from existing MLRD database | 4d | 2013-06-17 | 2013-06-20 | 34 | 10d | 0d | Programmer | 32h |
| 36 | 6.4 | Data Checking & Data cleaning | 4d | 2013-06-21 | 2013-06-26 | 35 | 10d | 0d | Programmer | 32h |
| 37 | 6.5 | Upload data into new MLRD database | 4d | 2013-06-27 | 2013-07-02 | 31, 36 | 10d |  | Programmer | 32h |
| 38 | 7 | **Systems Testing** | 34d | 2013-06-19 | 2013-08-05 |  | 0d |  |  | 168h |
| 39 | 7.1 | Prepare Systems Test Plan | 4d | 2013-06-19 | 2013-06-24 | 28 | 2d | 0d | Project Leader | 32h |
| 40 | 7.2 | Review/finalize Systems Test Plan | 1d | 2013-07-17 | 2013-07-17 | 39 | 2d |  | Project Leader; IT Department Applications Development Manager | 16h |
| 41 | 7.3 | Integrate Code components & Database | 3d | 2013-07-17 | 2013-07-19 | 30, 37 | 0d |  | Programmer | 24h |
| 42 | 7.4 | Perform Systems Testing | 10d | 2013-07-22 | 2013-08-02 | 40, 41 | 0d |  | Programmer | 80h |
| 43 | 7.5 | Review Results/Corrective Action | 1d | 2013-08-05 | 2013-08-05 | 42 | 0d |  | Programmer; Project Leader | 16h |
| 44 | 8 | **User Acceptance** | 25d | 2013-07-18 | 2013-08-21 |  | 0d |  |  | 360h |
| 45 | 8.1 | Write User Guide | 5d | 2013-07-18 | 2013-07-24 | 12 | 3d | 0d | Project Leader; User Representative | 80h |
| 46 | 8.2 | Review/finalize User Guide | 1d | 2013-07-25 | 2013-07-25 | 45 | 3d | 0d | Project Leader; User Representative; User Manager | 24h |
| 47 | 8.3 | Write Acceptance test plan | 3d | 2013-07-26 | 2013-07-30 | 46 | 3d | 0d | Project Leader | 24h |
| 48 | 8.4 | Review/finalize Acceptance test plan | 1d | 2013-07-31 | 2013-07-31 | 47 | 3d |  | Project Leader; User Representative; User Manager | 24h |
| 49 | 8.5 | Install System | 1d | 2013-08-06 | 2013-08-06 | 48, 43 | 0d |  | Programmer | 8h |
| 50 | 8.6 | Perform Acceptance Test | 10d | 2013-08-07 | 2013-08-20 | 49 | 0d |  | User Representative; Programmer | 160h |
| 51 | 8.7 | Review Test Results/Corrective Action | 1d | 2013-08-21 | 2013-08-21 | 50 | 0d |  | Programmer; Project Leader; User Representative; IT Department Applications Development Manager; User Manager | 40h |
