# new prec_ans

Schedule from MS Project, 2013-03-04 to 2013-08-28, costs in $, A marks actual dates.
iss

## Calendars

- Standard: Mon-Fri 08:00-12:00, 13:00-17:00; Sat-Sun off.

## Resources

| Resource | Rate |
| --- | --- |
| Project Leader | 31.25 |
| Programmer | 18.75 |
| User Representative | 18.75 |
| User | 18.75 |
| User Manager | 37.5 |
| IT Department Applications Development Manager | 37.5 |

## Schedule

| ID | WBS | Task | Duration | Start | Finish | Predecessors | Complete | Remaining | Baseline start | Baseline finish | Baseline duration | Total slack | Free slack | Resources | Work | Actual work | Cost | Baseline cost | Actual cost |
| --- | --- | --- | --- | --- | --- | --- | --- | --- | --- | --- | --- | --- | --- | --- | --- | --- | --- | --- | --- |
| 1 | 1 | **Initial Planning** | 6d | 2013-03-04 A | 2013-03-11 A |  | 100% |  | 2013-03-04 | 2013-03-11 | 6d |  |  |  | 64h | 64h | 2,100 | 2,100 | 2,100 |
| 2 | 1.1 | Produce Project Plan | 4d | 2013-03-04 A | 2013-03-07 A |  | 100% |  | 2013-03-04 | 2013-03-07 | 4d |  |  | Project Leader | 32h | 32h | 1,000 | 1,000 | 1,000 |
| 3 | 1.2 | Set-up filing system | 1d | 2013-03-08 A | 2013-03-08 A | 2 | 100% |  | 2013-03-08 | 2013-03-08 | 1d |  |  | Project Leader | 8h | 8h | 250 | 250 | 250 |
| 4 | 1.3 | Review/Finalise plan | 1d | 2013-03-11 A | 2013-03-11 A | 2 | 100% |  | 2013-03-11 | 2013-03-11 | 1d |  |  | Project Leader; User Manager; IT Department Applications Development Manager | 24h | 24h | 850 | 850 | 850 |
| 5 | 2 | **Requirements Identification** | 17d | 2013-03-12 A | 2013-04-03 A |  | 100% |  | 2013-03-12 | 2013-04-03 | 17d |  |  |  | 384h | 384h | 9,200 | 9,200 | 9,200 |
| 6 | 2.1 | Examine existing MLRD database documentation | 2d | 2013-03-12 A | 2013-03-13 A | 4, 3 | 100% |  | 2013-03-12 | 2013-03-13 | 2d |  |  | Project Leader | 16h | 16h | 500 | 500 | 500 |
| 7 | 2.2 | Interview Users | 4d | 2013-03-14 A | 2013-03-19 A | 6 | 100% |  | 2013-03-14 | 2013-03-19 | 4d |  |  | Project Leader; User Representative; User | 96h | 96h | 2,200 | 2,200 | 2,200 |
| 8 | 2.3 | Undertake Use Case Modeling | 5d | 2013-03-20 A | 2013-03-26 A | 7 | 100% |  | 2013-03-20 | 2013-03-26 | 5d |  |  | Project Leader | 40h | 40h | 1,250 | 1,250 | 1,250 |
| 9 | 2.4 | Prototype User Interface | 5d | 2013-03-20 A | 2013-03-26 A | 7 | 100% |  | 2013-03-20 | 2013-03-26 | 5d |  |  | Programmer; User Representative; User [80%] | 112h | 112h | 2,100 | 2,100 | 2,100 |
| 10 | 2.5 | Produce Use Case Model Survey | 5d | 2013-03-27 A | 2013-04-02 A | 8 | 100% |  | 2013-03-27 | 2013-04-02 | 5d |  |  | Project Leader | 40h | 40h | 1,250 | 1,250 | 1,250 |
| 11 | 2.6 | Produce User Interface Specification | 5d | 2013-03-27 A | 2013-04-02 A | 9 | 100% |  | 2013-03-27 | 2013-04-02 | 5d |  |  | Programmer | 40h | 40h | 750 | 750 | 750 |
| 12 | 2.7 | Review/finalize Requirements documentation | 1d | 2013-04-03 A | 2013-04-03 A | 11, 10 | 100% |  | 2013-04-03 | 2013-04-03 | 1d |  |  | Programmer; Project Leader; IT Department Applications Development Manager; User Manager; User Representative | 40h | 40h | 1,150 | 1,150 | 1,150 |
| 13 | 3 | **Requirements Specification** | 17d | 2013-04-04 A | 2013-04-26 A |  | 100% |  | 2013-04-04 | 2013-04-24 | 15d |  |  |  | 144h | 144h | 4,550 | 4,050 | 4,550 |
| 14 | 3.1 | Identify Domain Objects/Attributes | 5d | 2013-04-04 A | 2013-04-10 A | 12 | 100% |  | 2013-04-04 | 2013-04-09 | 4d |  |  | Project Leader | 40h | 40h | 1,250 | 1,000 | 1,250 |
| 15 | 3.2 | Produce Class/Collaboration diagrams | 6d | 2013-04-11 A | 2013-04-18 A | 14 | 100% |  | 2013-04-10 | 2013-04-16 | 5d |  |  | Project Leader | 48h | 48h | 1,500 | 1,250 | 1,500 |
| 16 | 3.3 | Write Use Case Realization Reports | 5d | 2013-04-19 A | 2013-04-25 A | 15 | 100% |  | 2013-04-17 | 2013-04-23 | 5d |  |  | Project Leader | 40h | 40h | 1,250 | 1,250 | 1,250 |
| 17 | 3.4 | Review/finalize Use Case Realization Reports | 1d | 2013-04-26 A | 2013-04-26 A | 16 | 100% |  | 2013-04-24 | 2013-04-24 | 1d |  |  | Project Leader; IT Department Applications Development Manager | 16h | 16h | 550 | 550 | 550 |
| 18 | 4 | **Design Modeling** | 27d | 2013-04-29 A | 2013-06-04 |  | 5% | 25.62d | 2013-04-25 | 2013-05-30 | 26d | 0d |  |  | 328h | 16h | 9,000 | 8,750 | 500 |
| 19 | 4.1 | Adjust objects to implementation architecture | 5d | 2013-04-29 A | 2013-05-03 | 17 | 40% | 3d | 2013-04-25 | 2013-04-30 | 4d | 0d |  | Project Leader | 40h | 16h | 1,250 | 1,000 | 500 |
| 20 | 4.2 | Define object associations (static/ dynamic/creation) | 4d | 2013-05-06 | 2013-05-09 | 19 |  |  | 2013-05-01 | 2013-05-06 | 4d | 0d |  | Project Leader | 32h |  | 1,000 | 1,000 |  |
| 21 | 4.3 | Create DB logical Design | 4d | 2013-05-10 | 2013-05-15 | 20 |  |  | 2013-05-07 | 2013-05-10 | 4d | 1d | 0d | Programmer | 32h |  | 600 | 600 |  |
| 22 | 4.4 | Produce Sequence Diagrams | 5d | 2013-05-10 | 2013-05-16 | 20 |  |  | 2013-05-07 | 2013-05-13 | 5d | 0d |  | Project Leader | 40h |  | 1,250 | 1,250 |  |
| 23 | 4.5 | Specify object attributes/operations | 4d | 2013-05-17 | 2013-05-22 | 22 |  |  | 2013-05-14 | 2013-05-17 | 4d | 0d |  | Project Leader | 32h |  | 1,000 | 1,000 |  |
| 24 | 4.6 | Structure object model for implementation | 4d | 2013-05-23 | 2013-05-28 | 23 |  |  | 2013-05-20 | 2013-05-23 | 4d | 0d |  | Project Leader | 32h |  | 1,000 | 1,000 |  |
| 25 | 4.7 | Produce Design Model Report | 4d | 2013-05-29 | 2013-06-03 | 24, 27 |  |  | 2013-05-24 | 2013-05-29 | 4d | 0d |  | Project Leader | 32h |  | 1,000 | 1,000 |  |
| 26 | 4.8 | Produce Data Base Physical Design | 4d | 2013-05-16 | 2013-05-21 | 21 |  |  | 2013-05-13 | 2013-05-16 | 4d | 1d | 0d | Programmer | 32h |  | 600 | 600 |  |
| 27 | 4.9 | Set database parameters | 4d | 2013-05-22 | 2013-05-27 | 26 |  |  | 2013-05-17 | 2013-05-22 | 4d | 1d |  | Programmer | 32h |  | 600 | 600 |  |
| 28 | 4.10 | Review/finalize Design Document | 1d | 2013-06-04 | 2013-06-04 | 25 |  |  | 2013-05-30 | 2013-05-30 | 1d | 0d |  | Programmer; Project Leader; IT Department Applications Development Manager | 24h |  | 700 | 700 |  |

| ID | WBS | Task | Duration | Start | Finish | Predecessors | Baseline start | Baseline finish | Baseline duration | Total slack | Free slack | Resources | Work | Cost | Baseline cost |
| --- | --- | --- | --- | --- | --- | --- | --- | --- | --- | --- | --- | --- | --- | --- | --- |
| 29 | 5 | **Programming** | 20d | 2013-06-20 | 2013-07-17 |  | 2013-05-31 | 2013-07-16 | 33d | 0d |  |  | 240h | 5,500 | 5,500 |
| 30 | 5.1 | Create C# code | 10d | 2013-07-04 | 2013-07-17 | 28 | 2013-07-03 | 2013-07-16 | 10d | 4d |  | Programmer; Project Leader | 160h | 4,000 | 4,000 |
| 31 | 5.2 | Define Database tables and fields | 10d | 2013-06-20 | 2013-07-03 | 28 | 2013-05-31 | 2013-06-13 | 10d | 0d |  | Programmer | 80h | 1,500 | 1,500 |
| 32 | 6 | **Database Migration** | 35d | 2013-06-05 | 2013-07-23 |  | 2013-05-31 | 2013-07-02 | 23d | 0d |  |  | 136h | 3,000 | 3,000 |
| 33 | 6.1 | Produce Database migration plan | 2d | 2013-06-05 | 2013-06-06 | 26 | 2013-05-31 | 2013-06-03 | 2d | 10d | 0d | Project Leader | 16h | 500 | 500 |
| 34 | 6.2 | Review/finalize Database migration plan | 1d | 2013-06-07 | 2013-06-07 | 33 | 2013-06-14 | 2013-06-14 | 1d | 10d | 0d | Project Leader; IT Department Applications Development Manager; Programmer | 24h | 700 | 700 |
| 35 | 6.3 | Extract Data from existing MLRD database | 4d | 2013-06-10 | 2013-06-13 | 34 | 2013-06-17 | 2013-06-20 | 4d | 10d | 0d | Programmer | 32h | 600 | 600 |
| 36 | 6.4 | Data Checking & Data cleaning | 4d | 2013-06-14 | 2013-06-19 | 35 | 2013-06-21 | 2013-06-26 | 4d | 10d |  | Programmer | 32h | 600 | 600 |
| 37 | 6.5 | Upload data into new MLRD database | 4d | 2013-07-18 | 2013-07-23 | 31, 36 | 2013-06-27 | 2013-07-02 | 4d | 0d |  | Programmer | 32h | 600 | 600 |
| 38 | 7 | **Systems Testing** | 36d | 2013-06-24 | 2013-08-12 |  | 2013-06-19 | 2013-08-05 | 34d | 0d |  |  | 168h | 3,900 | 3,900 |
| 39 | 7.1 | Prepare Systems Test Plan | 4d | 2013-06-24 | 2013-06-27 | 28 | 2013-06-19 | 2013-06-24 | 4d | 20d | 0d | Project Leader | 32h | 1,000 | 1,000 |
| 40 | 7.2 | Review/finalize Systems Test Plan | 1d | 2013-06-28 | 2013-06-28 | 39 | 2013-07-17 | 2013-07-17 | 1d | 20d |  | Project Leader; IT Department Applications Development Manager | 16h | 550 | 550 |
| 41 | 7.3 | Integrate Code components & Database | 3d | 2013-07-24 | 2013-07-26 | 30, 37 | 2013-07-17 | 2013-07-19 | 3d | 0d |  | Programmer | 24h | 450 | 450 |
| 42 | 7.4 | Perform Systems Testing | 10d | 2013-07-29 | 2013-08-09 | 40, 41 | 2013-07-22 | 2013-08-02 | 10d | 0d |  | Programmer | 80h | 1,500 | 1,500 |
| 43 | 7.5 | Review Results/Corrective Action | 1d | 2013-08-12 | 2013-08-12 | 42 | 2013-08-05 | 2013-08-05 | 1d | 0d |  | Programmer; Project Leader | 16h | 400 | 400 |
| 44 | 8 | **User Acceptance** | 30d | 2013-07-18 | 2013-08-28 |  | 2013-07-18 | 2013-08-21 | 25d | 0d |  |  | 360h | 8,450 | 8,450 |
| 45 | 8.1 | Write User Guide | 5d | 2013-07-18 | 2013-07-24 | 12 | 2013-07-18 | 2013-07-24 | 5d | 8d | 0d | Project Leader; User Representative | 80h | 2,000 | 2,000 |
| 46 | 8.2 | Review/finalize User Guide | 1d | 2013-07-25 | 2013-07-25 | 45 | 2013-07-25 | 2013-07-25 | 1d | 8d | 0d | Project Leader; User Representative; User Manager | 24h | 700 | 700 |
| 47 | 8.3 | Write Acceptance test plan | 3d | 2013-07-26 | 2013-07-30 | 46 | 2013-07-26 | 2013-07-30 | 3d | 8d | 0d | Project Leader | 24h | 750 | 750 |
| 48 | 8.4 | Review/finalize Acceptance test plan | 1d | 2013-07-31 | 2013-07-31 | 47 | 2013-07-31 | 2013-07-31 | 1d | 8d |  | Project Leader; User Representative; User Manager | 24h | 700 | 700 |
| 49 | 8.5 | Install System | 1d | 2013-08-13 | 2013-08-13 | 48, 43 | 2013-08-06 | 2013-08-06 | 1d | 0d |  | Programmer | 8h | 150 | 150 |
| 50 | 8.6 | Perform Acceptance Test | 10d | 2013-08-14 | 2013-08-27 | 49 | 2013-08-07 | 2013-08-20 | 10d | 0d |  | User Representative; Programmer | 160h | 3,000 | 3,000 |
| 51 | 8.7 | Review Test Results/Corrective Action | 1d | 2013-08-28 | 2013-08-28 | 50 | 2013-08-21 | 2013-08-21 | 1d | 0d |  | Programmer; Project Leader; User Representative; IT Department Applications Development Manager; User Manager | 40h | 1,150 | 1,150 |
